# MADES

Schedule from ProjectLibre, 2026-03-09 to 2026-06-05.

## Calendars

- Estandar: Mon-Fri 08:00-12:00, 13:00-17:00; Sat-Sun off. Exceptions (off unless hours are given): 2026-03-29 to 2026-04-03.

## Resources

| Resource |
| --- |
| No Asignado |
| Johan Gil |
| Edison Gutierrez |
| Miguel Avila |
| Yesid Martinez |
| Todo el equipo |

## Schedule

| ID | WBS | Task | Duration | Start | Finish | Predecessors | Constraint | Resources |
| --- | --- | --- | --- | --- | --- | --- | --- | --- |
| 1 | 1 | **Sprint 1 - Configuración y Autenticación** | 15d | 2026-03-09 | 2026-03-27 |  |  |  |
| 2 | 1.1 | Sprint planning | 1d | 2026-03-09 | 2026-03-09 |  |  | Todo el equipo |
| 3 | 1.2 | **HU-01: Configuración del entorno** | 5.88d | 2026-03-10 | 2026-03-17 |  |  |  |
| 4 | 1.2.1 | Configuración repositorio Git | 1d | 2026-03-10 | 2026-03-10 | 2 |  | Johan Gil |
| 5 | 1.2.2 | Configuración React+Vite-Typescript | 2d | 2026-03-11 | 2026-03-12 | 4 |  | Edison Gutierrez |
| 6 | 1.2.3 | Confguración backend Node.js+Express | 2d | 2026-03-11 | 2026-03-12 | 4 |  | Johan Gil |
| 7 | 1.2.4 | Configuración Docker/docker-compose | 1.75d | 2026-03-13 | 2026-03-16 | 6, 5 | start no earlier than 2026-03-13 | Miguel Avila |
| 8 | 1.2.5 | Pruebas configuración del entorno | 1d | 2026-03-16 | 2026-03-17 | 7 |  | Todo el equipo |
| 9 | 1.3 | **HU-02: Configuración de Base de Datos** | 4d | 2026-03-11 | 2026-03-16 |  |  |  |
| 10 | 1.3.1 | Diseño esquema BD | 1d | 2026-03-11 | 2026-03-11 | 4 |  | Miguel Avila |
| 11 | 1.3.2 | Script SQL cresción de tablas | 1d | 2026-03-12 | 2026-03-12 | 10 |  | Miguel Avila |
| 12 | 1.3.3 | Test conexión backend-PostgreSQL | 1d | 2026-03-13 | 2026-03-13 | 11 |  | Johan Gil |
| 13 | 1.3.4 | Pruebas de integración BD | 1d | 2026-03-16 | 2026-03-16 | 12 |  | Miguel Avila |
| 14 | 1.4 | **HU-03: Módulo de autenticación** | 7d | 2026-03-17 | 2026-03-26 |  |  |  |
| 15 | 1.4.1 | Levantamiento requisitos autenticación | 1d | 2026-03-17 | 2026-03-18 | 8 |  | Yesid Martinez |
| 16 | 1.4.2 | Desarrollo API autenticación (JWT) | 3d | 2026-03-18 | 2026-03-23 | 15 |  | Johan Gil |
| 17 | 1.4.3 | Desarrollo interfaz login React | 3d | 2026-03-18 | 2026-03-23 | 15 |  | Edison Gutierrez |
| 18 | 1.4.4 | Configuración control de roles | 1d | 2026-03-23 | 2026-03-24 | 17, 16 |  | Johan Gil |
| 19 | 1.4.5 | Integración back-front login | 1d | 2026-03-24 | 2026-03-25 | 18 |  | Edison Gutierrez |
| 20 | 1.4.6 | Pruebas módulo autenticación | 1d | 2026-03-25 | 2026-03-26 | 19 |  | Todo el equipo |
| 21 | 1.5 | **HU-04: Barra de navegación** | 3d | 2026-03-23 | 2026-03-26 |  |  |  |
| 22 | 1.5.1 | Componente barra de navegación | 2d | 2026-03-23 | 2026-03-25 | 17 |  | Edison Gutierrez |
| 23 | 1.5.2 | Pruebas nevgación por rol | 1d | 2026-03-25 | 2026-03-26 | 22 |  | Edison Gutierrez |
| 24 | 1.6 | **HU-05: Identidad visual y UI** | 4d | 2026-03-10 | 2026-03-13 |  |  |  |
| 25 | 1.6.1 | Guía de identidad visual | 1d | 2026-03-10 | 2026-03-10 | 2 |  | Edison Gutierrez |
| 26 | 1.6.2 | Componentes UI reutilizables | 2d | 2026-03-11 | 2026-03-12 | 25 |  | Edison Gutierrez |
| 27 | 1.6.3 | Pruebas componentes UI | 1d | 2026-03-13 | 2026-03-13 | 26 |  | Edison Gutierrez |

| ID | WBS | Task | Type | Duration | Start | Finish | Predecessors | Resources |
| --- | --- | --- | --- | --- | --- | --- | --- | --- |
| 28 | 1.7 | **HU-06: Service Worker PWA** |  | 4d | 2026-03-13 | 2026-03-18 |  |  |
| 29 | 1.7.1 | Configuración manifest.json |  | 1d | 2026-03-13 | 2026-03-13 | 5 | Yesid Martinez |
| 30 | 1.7.2 | Registro Service Worker+ caché |  | 2d | 2026-03-16 | 2026-03-17 | 29 | Yesid Martinez |
| 31 | 1.7.3 | Pruebas Service Worker |  | 1d | 2026-03-18 | 2026-03-18 | 30 | Yesid Martinez |
| 32 | 1.8 | Daily Meetings Sprint 1 |  | 15d | 2026-03-09 | 2026-03-27 |  | Todo el equipo |
| 33 | 1.9 | HITO: Entorno configurado y login operativo | milestone | 0d | 2026-03-26 | 2026-03-26 | 31, 27, 23, 20 | Todo el equipo |
| 34 | 1.10 | Retrospectiva sprint 1 |  | 1d | 2026-03-26 | 2026-03-27 | 33 | Todo el equipo |
| 35 | 2 | **SPRINT 2 - CRUD Productos e inventario online** |  | 1d | 2026-04-06 | 2026-04-06 |  |  |
| 36 | 2.1 | Sprint Planning Sprint 2 |  | 1d | 2026-04-06 | 2026-04-06 | 32, 34 | Todo el equipo |
| 37 | 3 | **HU-01: Consulta de producto** |  | 5d | 2026-04-07 | 2026-04-13 |  |  |
| 38 | 3.1 | Creación barra de navegación por rol |  | 1d | 2026-04-07 | 2026-04-07 | 36 | Johan Gil |
| 39 | 3.2 | Reunión análisis HU01 |  | 1d | 2026-04-07 | 2026-04-07 | 36 | Todo el equipo |
| 40 | 3.3 | Desarrollo endpoint consulta por código de barras |  | 2d | 2026-04-08 | 2026-04-09 | 39 | Johan Gil |
| 41 | 3.4 | Desarrollo UI consulta de producto |  | 2d | 2026-04-08 | 2026-04-09 | 39 | Edison Gutierrez |
| 42 | 3.5 | Integración consulta producto |  | 1d | 2026-04-10 | 2026-04-10 | 40, 41 | Edison Gutierrez |
| 43 | 3.6 | Pruebas consulta de producto |  | 1d | 2026-04-13 | 2026-04-13 | 42 | Todo el equipo |
| 44 | 4 | **HU-02: Estado de sincronización** |  | 3d | 2026-04-07 | 2026-04-09 |  |  |
| 45 | 4.1 | Reunión análisis HU02 |  | 1d | 2026-04-07 | 2026-04-07 | 36 | Todo el equipo |
| 46 | 4.2 | Desarrollo indiccador estado sincronización |  | 1d | 2026-04-08 | 2026-04-08 | 45 | Edison Gutierrez; Johan Gil |
| 47 | 4.3 | Pruebas indicador sincronización |  | 1d | 2026-04-09 | 2026-04-09 | 46 | Todo el equipo |
| 48 | 5 | **HU-06: Actualización de Productos** |  | 9d | 2026-04-07 | 2026-04-17 |  |  |
| 49 | 5.1 | Reunión análisis HU6 |  | 1d | 2026-04-07 | 2026-04-07 | 36 | Todo el equipo |
| 50 | 5.2 | Desarrollo API CRUD productos |  | 3d | 2026-04-08 | 2026-04-10 | 49 | Johan Gil |
| 51 | 5.3 | Desarrollo UI gestión de productos |  | 3d | 2026-04-08 | 2026-04-10 | 49 | Edison Gutierrez |
| 52 | 5.4 | Integración CRUD productos |  | 3d | 2026-04-13 | 2026-04-15 | 51, 50 | Edison Gutierrez |
| 53 | 5.5 | Pruebas funcionales CRUD productos |  | 2d | 2026-04-16 | 2026-04-17 | 52 | Todo el equipo |

| ID | WBS | Task | Type | Duration | Start | Finish | Predecessors | Constraint | Resources |
| --- | --- | --- | --- | --- | --- | --- | --- | --- | --- |
| 54 | 6 | **HU-07: Ajuestes de inventario** |  | 5d | 2026-04-07 | 2026-04-13 |  |  |  |
| 55 | 6.1 | Reunión análisis HU07 |  | 1d | 2026-04-07 | 2026-04-07 | 36 |  | Todo el equipo |
| 56 | 6.2 | Desarrollo API ajustes inventario |  | 2d | 2026-04-08 | 2026-04-09 | 55 |  | Johan Gil |
| 57 | 6.3 | Desarrollo UI ajustes inventario |  | 2d | 2026-04-08 | 2026-04-09 | 55 |  | Edison Gutierrez |
| 58 | 6.4 | Integración ajustes inventario |  | 1d | 2026-04-10 | 2026-04-10 | 57, 56 |  | Edison Gutierrez |
| 59 | 6.5 | Pruebas ajustes inventario |  | 1d | 2026-04-13 | 2026-04-13 | 58 |  | Todo el equipo |
| 60 | 7 | **HU-08: Validación de inventario** |  | 6d | 2026-04-07 | 2026-04-14 |  |  |  |
| 61 | 7.1 | Validación valores negativos backend |  | 1d | 2026-04-13 | 2026-04-13 | 50 |  | Johan Gil |
| 62 | 7.2 | Validación valores negativos frontend |  | 1d | 2026-04-13 | 2026-04-13 | 51 |  | Edison Gutierrez |
| 63 | 7.3 | Pruebas validación inventario |  | 1d | 2026-04-14 | 2026-04-14 | 62, 61 |  | Todo el equipo |
| 64 | 7.4 | Configuración ambiente servidor VPS |  | 2d | 2026-04-07 | 2026-04-08 | 36 |  | Miguel Avila |
| 65 | 8 | Daily Meetings Sprint 2 |  | 15d | 2026-04-06 | 2026-04-24 | 32, 34 |  | Todo el equipo |
| 66 | 9 | HITO: CRUD de productos y consulta de inventario | milestone | 0d | 2026-04-17 | 2026-04-17 | 53, 59, 64, 63 |  | Todo el equipo |
| 67 | 10 | Retrospectiva sprint 2 |  | 1d | 2026-04-20 | 2026-04-20 | 66 |  | Todo el equipo |
| 68 | 11 | **SPRINT 3 - Ventas offlline y sincronización** |  | 15d? | 2026-04-27 | 2026-05-15 |  |  |  |
| 69 | 11.1 | Sprint planning sprint 3 |  | 1d | 2026-04-27 | 2026-04-27 | 65, 67 | start no earlier than 2026-04-26 | Todo el equipo |
| 70 | 11.2 | **HU-03: Registrar ventas sin conexión** |  | 5d | 2026-04-28 | 2026-05-04 |  |  |  |
| 71 | 11.2.1 | Reunión análisis HU03 |  | 1d | 2026-04-28 | 2026-04-28 | 69 |  | Todo el equipo |
| 72 | 11.2.2 | Desarrollo lógica ventas offline con IdexedDB |  | 1d | 2026-04-29 | 2026-04-29 | 71 |  | Edison Gutierrez; Miguel Avila |
| 73 | 11.2.3 | Desarrollo UI registro ventas offline |  | 1d | 2026-04-30 | 2026-04-30 | 71 | start no earlier than 2026-04-30 | Edison Gutierrez |
| 74 | 11.2.4 | Integración ventas offline |  | 1d | 2026-05-01 | 2026-05-01 | 73, 72 | start no earlier than 2026-05-01 | Edison Gutierrez |
| 75 | 11.2.5 | Pruebas ventas sin conexión |  | 1d | 2026-05-04 | 2026-05-04 | 74 | start no earlier than 2026-05-02 | Todo el equipo |
| 76 | 11.3 | **HU-04: Actualización automática de inventario** |  | 4d | 2026-04-30 | 2026-05-05 |  |  |  |
| 77 | 11.3.1 | Descuento automático unidades vendidas |  | 2d | 2026-04-30 | 2026-05-01 | 72 | start no earlier than 2026-04-28 | Miguel Avila |
| 78 | 11.3.2 | Validación stock suficiente antes de venta |  | 1d | 2026-05-04 | 2026-05-04 | 77 |  | Yesid Martinez |
| 79 | 11.3.3 | Pruebas descuento automático |  | 1d | 2026-05-05 | 2026-05-05 | 78 |  | Todo el equipo |

| ID | WBS | Task | Type | Duration | Start | Finish | Predecessors | Constraint | Resources |
| --- | --- | --- | --- | --- | --- | --- | --- | --- | --- |
| 80 | 11.4 | **HU-05: Restricciones Modo Offline** |  | 2d | 2026-04-30 | 2026-05-01 |  |  |  |
| 81 | 11.4.1 | Bloqueo edición estructural offline |  | 1d | 2026-04-30 | 2026-04-30 | 71 | start no earlier than 2026-04-30 | Yesid Martinez |
| 82 | 11.4.2 | Pruebas restricciones offline |  | 1d | 2026-05-01 | 2026-05-01 | 81 |  | Todo el equipo |
| 83 | 11.5 | **HU-09: Sincronización Automática** |  | 8d? | 2026-04-28 | 2026-05-07 |  |  |  |
| 84 | 11.5.1 | Reunión análisis HU09 |  | 1d | 2026-04-28 | 2026-04-28 | 69 |  | Todo el equipo |
| 85 | 11.5.2 | Desarrollo detección automática de conexión |  | 1d | 2026-04-29 | 2026-04-29 | 84 |  | Johan Gil |
| 86 | 11.5.3 | Desarrollo envío ventas pendientes al servidor |  | 3d | 2026-04-30 | 2026-05-04 | 84 | start no earlier than 2026-04-30 | Johan Gil |
| 87 | 11.5.4 | Desarrollo limpieza registros sincronizados |  | 1d | 2026-05-05 | 2026-05-05 | 86 |  | Miguel Avila |
| 88 | 11.5.5 | Pruebas sincronización automática |  | 2d? | 2026-05-06 | 2026-05-07 | 85, 87, 86 |  | Todo el equipo |
| 89 | 11.6 | **HU-10: Actualización inventario local** |  | 8d | 2026-04-28 | 2026-05-07 |  |  |  |
| 90 | 11.6.1 | Actualización inventario local post-sync |  | 1d | 2026-05-05 | 2026-05-05 | 86 |  | Edison Gutierrez; Johan Gil |
| 91 | 11.6.2 | Notificación sincronización exitosa |  | 1d | 2026-05-06 | 2026-05-06 | 90 |  | Edison Gutierrez |
| 92 | 11.6.3 | Pruebas actualización inventario local |  | 1d | 2026-05-07 | 2026-05-07 | 91, 90 |  | Todo el equipo |
| 93 | 11.6.4 | Configuración service worker avanzado |  | 2d | 2026-04-28 | 2026-04-29 | 69 |  | Yesid Martinez |
| 94 | 11.7 | Daily Meeting Sprint 3 |  | 15d | 2026-04-27 | 2026-05-15 | 67, 65 |  | Todo el equipo |
| 95 | 11.8 | HITO: Operación offline con sicronzación | milestone | 0d | 2026-05-07 | 2026-05-07 | 79, 92, 75, 88, 82 |  | Todo el equipo |
| 96 | 11.9 | Retrospectiva sprint 3 |  | 1d | 2026-05-08 | 2026-05-08 | 95 |  | Todo el equipo |
| 97 | 12 | **SPRINT 4 - Notificaciones Reportes** |  | 15d | 2026-05-18 | 2026-06-05 |  |  |  |
| 98 | 12.1 | Sprint planning sprint 4 |  | 1d | 2026-05-18 | 2026-05-18 | 94, 96 |  | Todo el equipo |
| 99 | 12.2 | **HU-11: Notificaciones de stock bajo** |  | 6d | 2026-05-19 | 2026-05-26 |  |  |  |
| 100 | 12.2.1 | Reunión análisis HU11 |  | 1d | 2026-05-19 | 2026-05-19 | 98 |  | Todo el equipo |
| 101 | 12.2.2 | Desarrollo lógica detección stock mínimo |  | 2d | 2026-05-21 | 2026-05-22 | 100 | start no earlier than 2026-05-21 | Johan Gil |
| 102 | 12.2.3 | Desarrollo UI notiifcaiones online y offline |  | 2d | 2026-05-21 | 2026-05-22 | 100 | start no earlier than 2026-05-21 | Edison Gutierrez |
| 103 | 12.2.4 | Integración notificaciones |  | 1d | 2026-05-25 | 2026-05-25 | 102, 101 |  | Edison Gutierrez |
| 104 | 12.2.5 | Pruebas notificaciones stock bajo |  | 1d | 2026-05-26 | 2026-05-26 | 103 |  | Todo el equipo |

| ID | WBS | Task | Type | Duration | Start | Finish | Predecessors | Resources |
| --- | --- | --- | --- | --- | --- | --- | --- | --- |
| 105 | 12.3 | **HU-12: Configuración stock mínimo** |  | 2d | 2026-05-20 | 2026-05-21 |  |  |
| 106 | 12.3.1 | UI configuración stock mínimo por producto |  | 1d | 2026-05-20 | 2026-05-20 | 100 | Edison Gutierrez |
| 107 | 12.3.2 | API persistencia configuración stock mínimo |  | 1d | 2026-05-20 | 2026-05-20 | 100 | Johan Gil |
| 108 | 12.3.3 | Pruebas configuración stock mínimo |  | 1d | 2026-05-21 | 2026-05-21 | 106, 107 | Todo el equipo |
| 109 | 12.4 | **Reportes por empleado** |  | 3d | 2026-05-19 | 2026-05-21 |  |  |
| 110 | 12.4.1 | Desarrollo API reportes actividad por empleado |  | 2d | 2026-05-19 | 2026-05-20 | 98 | Yesid Martinez |
| 111 | 12.4.2 | Desarrollo UI reportes |  | 2d | 2026-05-19 | 2026-05-20 | 98 | Miguel Avila |
| 112 | 12.4.3 | Pruebas de reportes |  | 1d | 2026-05-21 | 2026-05-21 | 111, 110 | Todo el equipo |
| 113 | 12.5 | **Pruebas finales e integración** |  | 6d | 2026-05-27 | 2026-06-03 |  |  |
| 114 | 12.5.1 | Pruebas funcionales completas RF1-RF12 |  | 3d | 2026-05-27 | 2026-05-29 | 104, 112, 108 | Todo el equipo |
| 115 | 12.5.2 | Pruebas no funcionales (HTTPS, tiempos, offline) |  | 2d | 2026-06-01 | 2026-06-02 | 114 | Todo el equipo |
| 116 | 12.5.3 | Pruebas sincronización sin pérdida de datos |  | 1d | 2026-06-03 | 2026-06-03 | 115 | Todo el equipo |
| 117 | 12.5.4 | Pruebas instalación PWA Windows y Android |  | 1d | 2026-06-03 | 2026-06-03 | 115 | Todo el equipo |
| 118 | 12.6 | Daily meetings sprint 4 |  | 15d | 2026-05-18 | 2026-06-05 | 94, 96 | Todo el equipo |
| 119 | 12.7 | HITO: PWA completa con notificaciones y reportes | milestone | 0d | 2026-05-26 | 2026-05-26 | 108, 104 | Todo el equipo |
| 120 | 12.8 | Retrospectiva sprint 4 |  | 1d | 2026-05-27 | 2026-05-27 | 119 | Todo el equipo |
